# Pikes Peak 2014 2015

Schedule from GanttProject, 2014-07-13 to 2015-06-28.
Buckeye Current
Holidays every year on 01-01, 07-04, 11-11, 12-25

## Calendars

- Project calendar: Mon-Sun working. Exceptions (off unless hours are given): 2014-09-01, 2014-10-13, 2014-11-27, 2015-01-19, 2015-02-16, 2015-05-25.

## Schedule

| ID | WBS | Task | Type | Duration | Start | Finish | Predecessors |
| --- | --- | --- | --- | --- | --- | --- | --- |
| 1 | 1 | Pikes Peak | milestone | 0d | 2015-06-28 | 2015-06-28 |  |
| 2 | 2 | Autum Sem. | milestone | 0d | 2014-08-27 | 2014-08-27 |  |
| 3 | 3 | Autum Finals |  | 7d | 2014-12-11 | 2014-12-17 |  |
| 4 | 4 | Winter Break |  | 26d | 2014-12-18 | 2015-01-14 |  |
| 5 | 5 | Spring Sem | milestone | 0d | 2015-01-13 | 2015-01-13 |  |
| 6 | 6 | Spring Finals |  | 7d | 2015-04-29 | 2015-05-05 |  |
| 7 | 7 | Summer Break | milestone | 0d | 2015-05-04 | 2015-05-04 |  |
| 8 | 8 | Define Requirements (RW-3) |  | 3d | 2014-07-13 | 2014-07-15 |  |
| 9 | 9 | Design System (RW-3) |  | 4d | 2014-07-16 | 2014-07-19 | 8 |
| 10 | 10 | **Build (RW-3)** |  | 275d | 2014-07-20 | 2015-04-28 | 9 |
| 11 | 10.1 | **Powertrain** |  | 224d | 2014-07-20 | 2015-03-08 | 9 |
| 12 | 10.1.1 | Define Requirements (Powertrain) |  | 33d | 2014-07-20 | 2014-08-21 | 9 |
| 13 | 10.1.2 | Design System (Powertrain) |  | 7d | 2014-08-22 | 2014-08-28 | 12 |
| 14 | 10.1.3 | **Build (Powertrain)** |  | 157d | 2014-08-29 | 2015-02-08 | 13 |
| 15 | 10.1.3.1 | **Motor** |  | 69d | 2014-08-29 | 2014-11-07 | 13 |
| 16 | 10.1.3.1.1 | Define Requirements (Motor) |  | 1d | 2014-08-29 | 2014-08-29 | 13 |
| 17 | 10.1.3.1.2 | **Design System (Motor)** |  | 8d | 2014-08-30 | 2014-09-07 | 16 |
| 18 | 10.1.3.1.2.1 | Choose Motor |  | 8d | 2014-08-30 | 2014-09-07 | 16 |
| 19 | 10.1.3.1.3 | **Build (Motor)** |  | 60d | 2014-09-08 | 2014-11-07 | 17 |
| 20 | 10.1.3.1.3.1 | Purchase Motor |  | 30d | 2014-09-08 | 2014-10-07 | 17 |
| 21 | 10.1.3.1.3.2 | Recieve Motor |  | 30d | 2014-10-08 | 2014-11-07 | 20 |
| 22 | 10.1.3.2 | **Motor Controller** |  | 99d | 2014-08-29 | 2014-12-09 | 13 |
| 23 | 10.1.3.2.1 | Define Requirements (M/C) |  | 1d | 2014-08-29 | 2014-08-29 | 13 |
| 24 | 10.1.3.2.2 | **Design System (M/C)** |  | 8d | 2014-08-30 | 2014-09-07 | 23 |
| 25 | 10.1.3.2.2.1 | Choose Controller |  | 8d | 2014-08-30 | 2014-09-07 | 23 |

| ID | WBS | Task | Duration | Start | Finish | Predecessors |
| --- | --- | --- | --- | --- | --- | --- |
| 26 | 10.1.3.2.3 | **Build (M/C)** | 90d | 2014-09-08 | 2014-12-09 | 24 |
| 27 | 10.1.3.2.3.1 | Purchase Controller | 30d | 2014-09-08 | 2014-10-07 | 24 |
| 28 | 10.1.3.2.3.2 | Recieve Controller | 30d | 2014-10-08 | 2014-11-07 | 27 |
| 29 | 10.1.3.2.3.3 | Configure Controller to Motor | 30d | 2014-11-08 | 2014-12-09 | 21, 28 |
| 30 | 10.1.3.3 | **Pack** | 157d | 2014-08-29 | 2015-02-08 | 13 |
| 31 | 10.1.3.3.1 | Define Requirements (Pack) | 1d | 2014-08-29 | 2014-08-29 | 13 |
| 32 | 10.1.3.3.2 | **Design System (Pack)** | 22d | 2014-08-30 | 2014-09-21 | 31 |
| 33 | 10.1.3.3.2.1 | Choose Battery | 8d | 2014-08-30 | 2014-09-07 | 31 |
| 34 | 10.1.3.3.2.2 | Design Pack | 14d | 2014-09-08 | 2014-09-21 | 33 |
| 35 | 10.1.3.3.3 | **Build (Pack)** | 134d | 2014-09-22 | 2015-02-08 | 32 |
| 36 | 10.1.3.3.3.1 | Purchase Battery | 30d | 2014-09-22 | 2014-10-22 | 32 |
| 37 | 10.1.3.3.3.2 | Recieve Battery | 30d | 2014-10-23 | 2014-11-22 | 36 |
| 38 | 10.1.3.3.3.3 | Test Cells | 14d | 2014-11-23 | 2014-12-07 | 37 |
| 39 | 10.1.3.3.3.4 | Module | 60d | 2014-12-08 | 2015-02-08 | 37, 38 |
| 40 | 10.1.3.3.3.5 | Sense Wiring | 74d | 2014-11-23 | 2015-02-08 | 37, 113 |
| 41 | 10.1.3.3.3.6 | HV bussing | 74d | 2014-11-23 | 2015-02-08 | 37 |
| 42 | 10.1.3.4 | Final Drive Design | 30d | 2014-09-08 | 2014-10-07 | 13, 18, 25 |
| 43 | 10.1.3.5 | Cooling | 30d | 2014-09-08 | 2014-10-07 | 13, 18, 25 |
| 44 | 10.1.4 | **Integration Testing (Powertrain)** | 85d | 2014-12-10 | 2015-03-08 |  |
| 45 | 10.1.4.1 | Test Motor with Controller | 60d | 2014-12-10 | 2015-02-10 | 29, 43, 117, 118, 119, 120, 123, 124 |
| 46 | 10.1.4.2 | Test Battery with BMS | 30d | 2015-02-06 | 2015-03-08 | 117, 120, 121, 122, 125, 128 |
| 47 | 10.2 | **Chassis** | 235d | 2014-07-20 | 2015-03-19 | 9 |
| 48 | 10.2.1 | Define Requirements (Chassis) | 31d | 2014-07-20 | 2014-08-19 | 9 |
| 49 | 10.2.2 | Design System (Chassis) | 11d | 2014-08-20 | 2014-08-30 | 48 |

| ID | WBS | Task | Duration | Start | Finish | Predecessors |
| --- | --- | --- | --- | --- | --- | --- |
| 50 | 10.2.3 | **Build (Chassis)** | 163d | 2014-08-31 | 2015-02-17 |  |
| 51 | 10.2.3.1 | **Frame** | 109d | 2014-08-31 | 2014-12-21 | 49 |
| 52 | 10.2.3.1.1 | Define Requirements(Frame) | 1d | 2014-08-31 | 2014-08-31 | 49 |
| 53 | 10.2.3.1.2 | **Design (Frame)** | 34d | 2014-09-02 | 2014-10-05 | 52 |
| 54 | 10.2.3.1.2.1 | Select Frame | 6d | 2014-09-02 | 2014-09-07 |  |
| 55 | 10.2.3.1.2.2 | Purchase Frame | 14d | 2014-09-08 | 2014-09-21 | 54 |
| 56 | 10.2.3.1.2.3 | Get Frame CAD | 14d | 2014-09-08 | 2014-09-21 | 54 |
| 57 | 10.2.3.1.2.4 | CAD rolling chassis | 14d | 2014-09-22 | 2014-10-05 | 56 |
| 58 | 10.2.3.1.3 | **Build (Frame)** | 74d | 2014-10-06 | 2014-12-21 | 53 |
| 59 | 10.2.3.1.3.1 | Frame inspection | 30d | 2014-10-06 | 2014-11-05 | 53 |
| 60 | 10.2.3.1.3.2 | Assemble rolling Chassis | 14d | 2014-11-06 | 2014-11-20 | 55, 59 |
| 61 | 10.2.3.1.3.3 | Assign Chasis Volume | 7d | 2014-10-06 | 2014-10-12 | 56, 57 |
| 62 | 10.2.3.1.3.4 | Place Components [delete] | 1d | 2014-10-14 | 2014-10-14 | 61 |
| 63 | 10.2.3.1.3.5 | Do required rolling Chassis Maintienance | 30d | 2014-11-21 | 2014-12-21 | 60 |
| 64 | 10.2.3.2 | **Mounting Hardware** | 121d | 2014-10-14 | 2015-02-17 | 49, 61 |
| 65 | 10.2.3.2.1 | Design Requirements (Mounting) | 14d | 2014-10-14 | 2014-10-27 | 49 |
| 66 | 10.2.3.2.2 | **Design (Mounting)** | 47d | 2014-11-21 | 2015-01-09 | 65, 101 |
| 67 | 10.2.3.2.2.1 | Define Requirements (Battery Frame) | 7d | 2014-11-21 | 2014-11-28 | 34, 65 |
| 68 | 10.2.3.2.2.2 | Design (Battery Frame) | 40d | 2014-11-29 | 2015-01-09 | 67 |
| 69 | 10.2.3.2.2.3 | Define Requirements (Motor Mount) | 7d | 2014-11-21 | 2014-11-28 | 18, 65 |
| 70 | 10.2.3.2.2.4 | Design (Motor Mount) | 40d | 2014-11-29 | 2015-01-09 | 69 |
| 71 | 10.2.3.2.2.5 | Define Requirements (Controller Mount) | 7d | 2014-11-21 | 2014-11-28 | 25, 65 |
| 72 | 10.2.3.2.2.6 | Design (Controller Mount) | 40d | 2014-11-29 | 2015-01-09 | 71 |
| 73 | 10.2.3.2.2.7 | Define Requirements (Fairing Mount) | 7d | 2014-11-21 | 2014-11-28 | 65 |
| 74 | 10.2.3.2.2.8 | Design (Fairing Mount) | 14d | 2014-11-29 | 2014-12-12 | 73, 101 |

| ID | WBS | Task | Duration | Start | Finish | Predecessors |
| --- | --- | --- | --- | --- | --- | --- |
| 75 | 10.2.3.2.3 | **Build (Mounting)** | 37d | 2015-01-10 | 2015-02-17 | 66 |
| 76 | 10.2.3.2.3.1 | Check CAD for interference | 7d | 2015-01-10 | 2015-01-16 | 66 |
| 77 | 10.2.3.2.3.2 | Build (Battery frame) | 30d | 2015-01-17 | 2015-02-17 | 68, 76 |
| 78 | 10.2.3.2.3.3 | Build (Motor Mount) | 30d | 2015-01-17 | 2015-02-17 | 70, 76 |
| 79 | 10.2.3.2.3.4 | Build (Controller Mount) | 30d | 2015-01-17 | 2015-02-17 | 72, 76 |
| 80 | 10.2.3.2.3.5 | Build (Fairing Mount) | 30d | 2015-01-17 | 2015-02-17 | 74, 76 |
| 81 | 10.2.3.3 | **Suspension and Brakes** | 156d | 2014-08-31 | 2015-02-09 | 49 |
| 82 | 10.2.3.3.1 | Define Requirements (S and B) | 14d | 2014-08-31 | 2014-09-14 | 49 |
| 83 | 10.2.3.3.2 | **Design (S and B)** | 44d | 2014-09-15 | 2014-10-29 | 82 |
| 84 | 10.2.3.3.2.1 | Choose Suspension | 14d | 2014-09-15 | 2014-09-28 | 82 |
| 85 | 10.2.3.3.2.2 | Choose Brakes | 14d | 2014-09-15 | 2014-09-28 | 82 |
| 86 | 10.2.3.3.2.3 | Purchase Suspendsion Components | 30d | 2014-09-29 | 2014-10-29 | 84 |
| 87 | 10.2.3.3.2.4 | Purchase Brakes | 30d | 2014-09-29 | 2014-10-29 | 85 |
| 88 | 10.2.3.3.3 | **Build (S and B)** | 30d | 2015-01-10 | 2015-02-09 |  |
| 89 | 10.2.3.3.3.1 | Suspension Testing and Tunning | 30d | 2015-01-10 | 2015-02-09 | 66 |
| 90 | 10.2.4 | **Integration Test (Chassis)** | 30d | 2015-02-18 | 2015-03-19 | 50, 51, 64, 81 |
| 91 | 10.2.4.1 | Test Fit mounting hardware | 30d | 2015-02-18 | 2015-03-19 | 50 |
| 92 | 10.3 | **Aerodynamics** | 209d | 2014-07-20 | 2015-02-21 | 9 |
| 93 | 10.3.1 | Define Requirements (Aero) | 56d | 2014-07-20 | 2014-09-14 | 9 |
| 94 | 10.3.2 | Ansys Setup | 91d | 2014-07-20 | 2014-10-20 | 9 |
| 95 | 10.3.3 | Create Aero CAD library | 91d | 2014-07-20 | 2014-10-20 | 9 |
| 96 | 10.3.4 | RW-2.X redesign | 84d | 2014-07-20 | 2014-10-12 | 9 |
| 97 | 10.3.5 | **Design System (Aero)** | 86d | 2014-09-15 | 2014-12-12 | 93 |
| 98 | 10.3.5.1 | Decide Mold Material | 35d | 2014-09-15 | 2014-10-20 |  |
| 99 | 10.3.5.2 | Decide Fairing Material | 65d | 2014-09-15 | 2014-11-20 | 93 |
| 100 | 10.3.5.3 | Define Fairing Bounding Volume and Shape | 7d | 2014-10-14 | 2014-10-20 | 61, 96 |
| 101 | 10.3.5.4 | Design and CAD Fairing | 30d | 2014-10-21 | 2014-11-20 | 94, 95, 98, 100 |
| 102 | 10.3.5.5 | Purchase Fairing components | 21d | 2014-11-21 | 2014-12-12 | 99, 101 |

| ID | WBS | Task | Duration | Start | Finish | Predecessors |
| --- | --- | --- | --- | --- | --- | --- |
| 103 | 10.3.6 | **Build (Aero)** | 67d | 2014-12-13 | 2015-02-21 | 97 |
| 104 | 10.3.6.1 | Build Molds | 30d | 2014-12-13 | 2015-01-13 | 102 |
| 105 | 10.3.6.2 | Build Fairings | 30d | 2015-01-14 | 2015-02-13 | 104 |
| 106 | 10.3.6.3 | Paint Fairings | 7d | 2015-02-14 | 2015-02-21 | 105 |
| 107 | 10.4 | **Electronics** | 254d | 2014-07-20 | 2015-04-07 | 9 |
| 108 | 10.4.1 | Define Requirements (Electronics) | 43d | 2014-07-20 | 2014-08-31 | 9 |
| 109 | 10.4.2 | **Design (Electronics)** | 50d | 2014-09-02 | 2014-10-22 | 108 |
| 110 | 10.4.2.1 | Define Data Bus | 6d | 2014-09-02 | 2014-09-07 | 108 |
| 111 | 10.4.2.2 | Define subcomponents | 7d | 2014-09-08 | 2014-09-14 | 108, 110 |
| 112 | 10.4.2.3 | Define connectors | 14d | 2014-09-02 | 2014-09-15 | 108 |
| 113 | 10.4.2.4 | Design Components | 30d | 2014-09-15 | 2014-10-15 | 110, 111 |
| 114 | 10.4.2.5 | Design all Software | 30d | 2014-09-15 | 2014-10-15 | 110, 111 |
| 115 | 10.4.2.6 | Define Dimensions of all hardware | 7d | 2014-10-16 | 2014-10-22 | 61, 112, 113, 114 |
| 116 | 10.4.3 | **Buid (Electronics)** | 101d | 2014-10-23 | 2015-02-05 | 109 |
| 117 | 10.4.3.1 | Low Voltaage Power | 45d | 2014-10-23 | 2014-12-08 | 109 |
| 118 | 10.4.3.2 | High Voltage Switching | 45d | 2014-10-23 | 2014-12-08 | 109 |
| 119 | 10.4.3.3 | Rider Interface | 45d | 2014-10-24 | 2014-12-09 |  |
| 120 | 10.4.3.4 | Charging | 45d | 2014-10-23 | 2014-12-08 | 109 |
| 121 | 10.4.3.5 | Battery Managment system | 100d | 2014-10-23 | 2015-02-04 | 109 |
| 122 | 10.4.3.6 | **Datalogging** | 100d | 2014-10-24 | 2015-02-05 | 109 |
| 123 | 10.4.3.6.1 | Data Storage | 45d | 2014-10-24 | 2014-12-09 |  |
| 124 | 10.4.3.6.2 | m/c telemetry | 45d | 2014-10-24 | 2014-12-09 |  |
| 125 | 10.4.3.6.3 | Battery Telemetry | 100d | 2014-10-24 | 2015-02-05 |  |
| 126 | 10.4.3.6.4 | All | 100d | 2014-10-24 | 2015-02-05 |  |
| 127 | 10.4.3.7 | Wiring harness | 100d | 2014-10-23 | 2015-02-04 | 109 |
| 128 | 10.4.4 | Balancing | 100d | 2014-10-23 | 2015-02-04 | 115 |

| ID | WBS | Task | Duration | Start | Finish | Predecessors | Complete |
| --- | --- | --- | --- | --- | --- | --- | --- |
| 129 | 10.4.5 | **Integration Testing (Electronics)** | 60d | 2015-02-06 | 2015-04-07 | 116 |  |
| 130 | 10.4.5.1 | Software Testing | 30d | 2015-02-06 | 2015-03-08 | 116 | 1% |
| 131 | 10.4.5.2 | Unit Testing Critical | 30d | 2015-02-06 | 2015-03-08 | 116 |  |
| 132 | 10.4.5.3 | Full Electrical testing | 30d | 2015-03-09 | 2015-04-07 | 116, 131 |  |
| 133 | 10.5 | Mount Powertrain | 21d | 2015-03-09 | 2015-03-29 | 11 |  |
| 134 | 10.6 | Mount Electronics | 7d | 2015-04-08 | 2015-04-14 | 107, 133 |  |
| 135 | 10.7 | Assemble Full Vehicle | 14d | 2015-04-15 | 2015-04-28 | 47, 92, 133, 134 |  |
| 136 | 11 | **Integration Testing (RW-3)** | 52d | 2015-04-29 | 2015-06-20 | 10 |  |
| 137 | 11.1 | First Spin | 7d | 2015-04-29 | 2015-05-05 | 10 |  |
| 138 | 11.2 | Vehicle Dyno Testing | 15d | 2015-05-06 | 2015-05-20 | 137 |  |
| 139 | 11.3 | Vehicle Road Testing | 30d | 2015-05-21 | 2015-06-20 | 138 |  |
